# TSI MEMS Reliability Assessment & FA Schedule 2019 1126

Schedule from MS Project, 2019-11-21 to 2019-12-30, A marks actual dates.
Wispry inc

## Calendars

- Standard: Mon-Fri 08:00-12:00, 13:00-17:00; Sat-Sun off.

## Resources

| Resource |
| --- |
| Shawn |
| Dana |
| Andy |
| Sangwoo |
| Tung |
| Duanjie |
| Montreal |
| Duanjie/Montreal |
| Zhu YanQing |
| Samira |
| David |
| Raja |
| And |
| Wispry |

## Schedule

| ID | WBS | Task | Type | Duration | Start | Finish | Predecessors | Complete | Remaining | Total slack | Free slack | Constraint | Resources | Work | Actual work |
| --- | --- | --- | --- | --- | --- | --- | --- | --- | --- | --- | --- | --- | --- | --- | --- |
| 1 | 1 | **2552C #12 Failure Analysis** |  | 28d | 2019-11-21 A | 2019-12-30 |  | 20% | 22.29d | 0d |  |  | Sangwoo | 1472h | 309.69h |
| 2 | 1.1 | **Wispry Activities** |  | 28d | 2019-11-21 A | 2019-12-30 |  | 21% | 22.01d | 0d |  |  |  | 1192h | 264h |
| 3 | 1.1.1 | **Provide Materials to AAC** |  | 4d | 2019-11-21 A | 2019-11-26 |  | 83% | 0.67d | 24d |  |  |  | 96h | 80h |
| 4 | 1.1.1.1 | Screen BC & BE die for AAC (YaQi) |  | 2d | 2019-11-21 A | 2019-11-22 A |  | 100% |  |  |  |  | Andy | 16h | 16h |
| 5 | 1.1.1.2 | Ship Hardware, Screened Samples to AAC (YaQi) | milestone | 0d | 2019-11-22 A | 2019-11-22 A | 4 | 100% |  |  |  |  | Andy; Sangwoo |  |  |
| 6 | 1.1.1.3 | Receive Hardware and Samples by AAC (YaQi) |  | 1d | 2019-11-25 A | 2019-11-25 A | 5 | 100% |  |  |  |  |  |  |  |
| 7 | 1.1.1.4 | Ship Failed BC Samples to AAC (Zhu YanQing) |  | 2d | 2019-11-21 A | 2019-11-22 A |  | 100% |  |  |  |  | Andy; Sangwoo | 32h | 32h |
| 8 | 1.1.1.5 | Receive BC_1 Cycled Samples for FA (Zu YanQing) |  | 1d | 2019-11-25 A | 2019-11-25 A | 7 | 100% |  |  |  |  |  |  |  |
| 9 | 1.1.1.6 | Provide Labview executables to AAC (YaQi) |  | 2d | 2019-11-21 A | 2019-11-22 A |  | 100% |  |  |  |  | Andy | 16h | 16h |
| 10 | 1.1.1.7 | Provide Labview Code: Screening, Cycling, Hold Down (AAC - YaQi) |  | 2d | 2019-11-25 A | 2019-11-26 A | 9 | 100% |  |  |  |  | Andy | 16h | 16h |
| 11 | 1.1.1.8 | Provide JMP Scripts for cycling analysis |  | 2d | 2019-11-21 | 2019-11-22 |  |  |  | 26d |  |  | Dana | 16h |  |
| 12 | 1.1.2 | **Wispry Cycling & Analysis Activities** |  | 28d | 2019-11-21 A | 2019-12-30 |  | 14% | 24d | 0d |  |  |  | 728h | 104h |
| 13 | 1.1.2.1 | BC_1: Complete Cycling and Preliminary Analysis |  | 1d | 2019-11-21 A | 2019-11-21 A |  | 100% |  |  |  |  | Dana | 8h | 8h |
| 14 | 1.1.2.2 | BC_1: Plots of Con, Coff, Vcmin |  | 1d | 2019-11-22 A | 2019-11-22 A | 13 | 100% |  |  |  | start no earlier than 2019-11-21 | Dana | 8h | 8h |
| 15 | 1.1.2.3 | BC_1: Failure mode analysis (Con, Coff, Stuck up/down) |  | 3d | 2019-11-22 A | 2019-11-26 A | 13 | 100% |  |  |  | start no earlier than 2019-11-21 | Dana | 24h | 24h |
| 16 | 1.1.2.4 | Update Cycling Code for more early RP | milestone | 0d | 2019-11-21 A | 2019-11-21 A | 13 | 100% |  |  |  |  | Andy |  |  |
| 17 | 1.1.2.5 | BE_1: Screen BE Design Variant for Cycling |  | 1d | 2019-11-22 A | 2019-11-22 A | 13, 16 | 100% |  |  |  | start no earlier than 2019-11-21 | Andy | 8h | 8h |
| 18 | 1.1.2.6 | BE_1: Cycle BE Design Variant |  | 1d | 2019-11-22 A | 2019-11-22 A | 17FS-1d | 100% |  |  |  |  | Andy | 8h | 8h |
| 19 | 1.1.2.7 | BE_1: Analysis of BE Cycling Data |  | 7d | 2019-11-26 | 2019-12-04 | 18, 20 |  |  | 18d |  |  | Dana | 56h |  |
| 20 | 1.1.2.8 | BC_7: Screen BC Design for cycling at RT |  | 1d | 2019-11-25 A | 2019-11-25 A | 17 | 100% |  |  |  |  | Andy | 8h | 8h |
| 21 | 1.1.2.9 | BC_7: Cycle BC_7 at RT |  | 3d | 2019-11-26 A | 2019-11-28 A | 20 | 100% |  |  |  |  | Andy | 24h | 24h |
| 22 | 1.1.2.10 | BC_7: Analyze BC_7 cycling results at RT |  | 3d | 2019-12-02 | 2019-12-04 | 21, 31 |  |  | 18d |  |  | Dana | 24h |  |
| 23 | 1.1.2.11 | BC_8: Screen BC Design for cycling (44V, 45C, 2M) +RPs |  | 1d | 2019-11-26 A | 2019-11-26 A | 20 | 100% |  |  |  |  | Andy | 8h | 8h |
| 24 | 1.1.2.12 | BC_8: Cycle BC_8 (44V, 45C, 2M) +RPs |  | 1d | 2019-11-27 A | 2019-11-27 A | 23 | 100% |  |  |  |  | Andy | 8h | 8h |
| 25 | 1.1.2.13 | BC_8: Analyze BC_8 cycling results (44V, 45C, 2M) +RPs |  | 5d | 2019-11-28 | 2019-12-04 | 24, 26 |  |  | 18d |  |  | Dana | 40h |  |
| 26 | 1.1.2.14 | BC_9_10: Screen BC Design for Hold Down (44V, 25 C & 45C) |  | 1d | 2019-11-27 | 2019-11-27 | 23 |  |  | 13d | 0d |  | Andy | 8h |  |
| 27 | 1.1.2.15 | BC_9: Hold down BC_9 (44V, 45C, 2M) |  | 3d | 2019-11-28 | 2019-12-02 | 26 |  |  | 13d | 0d |  | Andy | 24h |  |
| 28 | 1.1.2.16 | BC_9: Analyze BC_9 hold down results (44V, 45C) |  | 7d | 2019-12-03 | 2019-12-11 | 27 |  |  | 13d |  |  | Dana | 56h |  |
| 29 | 1.1.2.17 | BC_10: Holddown BC_10 (44V, 25C) |  | 3d | 2019-11-28 | 2019-12-02 | 26 |  |  | 13d | 0d |  | And | 24h |  |
| 30 | 1.1.2.18 | BC_10: Analyze BC_10 holddown results (44V, 25) |  | 7d | 2019-12-03 | 2019-12-11 | 29 |  |  | 13d |  |  | Dana | 56h |  |
| 31 | 1.1.2.19 | Thanksgiving Holiday |  | 2d | 2019-11-28 | 2019-11-29 |  |  |  | 0d |  | start no earlier than 2019-11-28 | Wispry | 16h |  |
| 32 | 1.1.2.20 | Update and Validate Cycling Code to perform CV at each RP |  | 2d | 2019-12-02 | 2019-12-03 | 17, 31 |  |  | 0d |  |  | Andy | 16h |  |
| 33 | 1.1.2.21 | BC_2: Screen BC Design for cycling with CV by RP |  | 1d | 2019-12-04 | 2019-12-04 | 32 |  |  | 0d |  |  | Andy | 8h |  |
| 34 | 1.1.2.22 | BC_2: Cycle BC_2 with CV at each RP |  | 3d | 2019-12-05 | 2019-12-09 | 33 |  |  | 13d | 0d |  | Andy | 24h |  |
| 35 | 1.1.2.23 | Update Cycling Anlaysis Script for RP CV curves |  | 2d | 2019-12-02 | 2019-12-03 | 31 |  |  | 17d | 4d |  | Dana | 16h |  |
| 36 | 1.1.2.24 | BC_2: Analyze Cycling Results with CV at each RP |  | 2d | 2019-12-10 | 2019-12-11 | 34, 35 |  |  | 13d |  |  | Dana | 16h |  |
| 37 | 1.1.2.25 | BC_3: Screen BC Design for cycling at 65C |  | 1d | 2019-12-05 | 2019-12-05 | 33 |  |  | 0d |  |  | Andy | 8h |  |
| 38 | 1.1.2.26 | BC_3: Cycle BC_3 at 65C |  | 2d | 2019-12-06 | 2019-12-09 | 37 |  |  | 0d |  |  | Andy | 16h |  |
| 39 | 1.1.2.27 | BC_3: Analyze cycling results at 65C |  | 2d | 2019-12-10 | 2019-12-11 | 38 |  |  | 13d |  |  | Dana | 16h |  |
| 40 | 1.1.2.28 | BC_4: Screen BC Design for cycling at 85C |  | 1d | 2019-12-06 | 2019-12-06 | 37 |  |  | 4d | 0d |  | Andy | 8h |  |
| 41 | 1.1.2.29 | BC_4: Cycle BC_4 at 85C |  | 2d | 2019-12-10 | 2019-12-11 | 38 |  |  | 0d |  |  | Andy | 16h |  |
| 42 | 1.1.2.30 | BC_4: Analyze cycling results at 85C |  | 2d | 2019-12-12 | 2019-12-13 | 41 |  |  | 11d |  |  | Dana | 16h |  |
| 43 | 1.1.2.31 | BC_5: Screen BC Design for cycling 40V, 45C |  | 1d | 2019-12-09 | 2019-12-09 | 40 |  |  | 4d | 0d |  | Andy | 8h |  |
| 44 | 1.1.2.32 | BC_5: Cycle BC_5 at 40V, 45C |  | 3d | 2019-12-12 | 2019-12-16 | 41 |  |  | 0d |  |  | Andy | 24h |  |
| 45 | 1.1.2.33 | BC_5: Analyze cycling results at 40V, 45C |  | 2d | 2019-12-17 | 2019-12-18 | 44 |  |  | 8d |  |  | Dana | 16h |  |
| 46 | 1.1.2.34 | BC_6: Screen BC Design for cycling 50V, 45C |  | 1d | 2019-12-10 | 2019-12-10 | 43 |  |  | 4d | 0d |  | Andy | 8h |  |
| 47 | 1.1.2.35 | BC_6: Cycle BC_6 at 50V, 45C |  | 4d | 2019-12-17 | 2019-12-20 | 44, 46 |  |  | 0d |  |  | Andy | 32h |  |
| 48 | 1.1.2.36 | BC_6: Analyze cycling results at 50V, 45C |  | 2d | 2019-12-23 | 2019-12-24 | 47 |  |  | 4d |  |  | Dana | 16h |  |
| 49 | 1.1.2.37 | BO_1: Screen BC Design for cycling 44V, 45C |  | 1d | 2019-12-11 | 2019-12-11 | 46 |  |  | 7d |  |  | Andy | 8h |  |
| 50 | 1.1.2.38 | BO_1: Cycle BC_6 at 44V, 45C |  | 4d | 2019-12-23 | 2019-12-26 | 49, 47 |  |  | 0d |  |  | Andy | 32h |  |
| 51 | 1.1.2.39 | BO_1: Analyze cycling results at 44V, 45C |  | 2d | 2019-12-27 | 2019-12-30 | 50 |  |  | 0d |  |  | Dana | 16h |  |

| ID | WBS | Task | Duration | Start | Finish | Predecessors | Complete | Remaining | Total slack | Free slack | Resources | Work | Actual work |
| --- | --- | --- | --- | --- | --- | --- | --- | --- | --- | --- | --- | --- | --- |
| 53 | 1.1.3 | **Wispry Failure Analysis Activities** | 12d | 2019-11-21 A | 2019-12-06 |  | 26% | 8.9d | 16d |  |  | 264h | 80h |
| 54 | 1.1.3.1 | BC_1: Perform CV curves on failed devices | 2d | 2019-11-21 A | 2019-11-22 A |  | 100% |  |  |  | Andy | 16h | 16h |
| 55 | 1.1.3.2 | BC_1: Evaluate Optical Detection (OM/Wyko) for stuck up/down | 2d | 2019-11-21 A | 2019-11-22 A |  | 100% |  |  |  | Samira; Tung | 32h | 32h |
| 56 | 1.1.3.3 | BC_1: Deconstruct Cavity: Assess Lid Interference (SEM) | 3d | 2019-11-25 | 2019-11-27 | 55 |  |  | 23d |  | Duanjie | 24h |  |
| 57 | 1.1.3.4 | BC_1: Deconstruct Cavity - Remove Beams assess wear (SEM) | 3d | 2019-11-25 | 2019-11-27 | 55 |  |  | 21d | 0d | Duanjie | 24h |  |
| 58 | 1.1.3.5 | BC_1: FIB Cavity for TEM analysis of Cavity Construction (Critical Dimension) | 5d | 2019-12-02 | 2019-12-06 | 55FS+5d |  |  | 8d | 0d | Duanjie | 40h |  |
| 59 | 1.1.3.6 | BC_1: FIB Beam to measure MB/CB heights | 2d | 2019-12-02 | 2019-12-03 | 55FS+5d |  |  | 11d | 3d | Duanjie | 16h |  |
| 60 | 1.1.3.7 | BC_1: FIB Lid to measure LMB/LB heights | 2d | 2019-12-02 | 2019-12-03 | 55FS+5d |  |  | 11d | 3d | Duanjie | 16h |  |
| 61 | 1.1.3.8 | BC_1: Deconstruct cavity to access beam for compliance evaluation (Indentor) | 2d | 2019-11-25 A | 2019-11-26 A | 55 | 100% |  |  |  | Duanjie | 16h | 16h |
| 62 | 1.1.3.9 | BC_1: Ship samples to Montreal Poly | 2d | 2019-11-27 A | 2019-11-28 A | 61 | 100% |  |  |  | Duanjie | 16h | 16h |
| 63 | 1.1.3.10 | BC_1: Measure compliance and restoring force | 6d | 2019-11-29 | 2019-12-06 | 62 |  |  | 16d |  | Duanjie/Montreal | 48h |  |
| 64 | 1.1.3.11 | BC_1: Perform elementalanalysis to identify materials on contacting surfaces (MB/CB/RCH) | 2d | 2019-11-28 | 2019-11-29 | 57 |  |  | 21d |  | Duanjie | 16h |  |
| 66 | 1.1.4 | **Wispry Modeling & Measurement Correlation** | 20d | 2019-11-21 | 2019-12-18 |  |  |  | 8d |  |  | 104h |  |
| 67 | 1.1.4.1 | Summarize Process conditions and all inline measurements What are gaps? | 3d | 2019-11-21 | 2019-11-25 |  |  |  | 25d |  | Raja | 24h |  |
| 68 | 1.1.4.2 | Model Beam behavior with extracted geometric measures (BC, BE, B0) | 2d | 2019-12-09 | 2019-12-10 | 60, 58, 59 |  |  | 8d | 0d | Samira | 16h |  |
| 69 | 1.1.4.3 | Compare Wafer specific Model and Measurement | 1d | 2019-12-11 | 2019-12-11 | 68 |  |  | 8d | 0d | Samira | 8h |  |
| 70 | 1.1.4.4 | Use model and measurments to estimate initial adhesion energy | 2d | 2019-12-12 | 2019-12-13 | 69 |  |  | 8d | 0d | Samira; David | 32h |  |
| 71 | 1.1.4.5 | Can we estimate charging adhesion versus chemico/physico adhesion | 3d | 2019-12-16 | 2019-12-18 | 70 |  |  | 8d |  | David | 24h |  |
| 73 | 1.2 | **AAC Failure Analysis Activities** | 7d | 2019-11-26 | 2019-12-04 |  |  |  | 18d |  |  | 56h |  |
| 74 | 1.2.1 | BC_1: Evaluate Optical Detection (OM/Wyko) for stuck up/down | 1d | 2019-11-26 | 2019-11-26 | 8 |  |  | 18d | 0d | Zhu YanQing | 8h |  |
| 75 | 1.2.2 | BC_1: Deconstruct Cavity: Assess Lid Interference (SEM) | 1d | 2019-11-27 | 2019-11-27 | 74 |  |  | 18d | 0d | Zhu YanQing | 8h |  |
| 76 | 1.2.3 | BC_1: Deconstruct Cavity - Remove Beams assess wear (SEM) | 1d | 2019-11-28 | 2019-11-28 | 75 |  |  | 18d | 0d | Zhu YanQing | 8h |  |
| 77 | 1.2.4 | BC_1: FIB Beam to measure MB/CB heights | 1d | 2019-11-29 | 2019-11-29 | 76 |  |  | 18d | 0d | Zhu YanQing | 8h |  |
| 78 | 1.2.5 | BC_1: FIB Lid to measure LMB/LB heights | 1d | 2019-12-02 | 2019-12-02 | 77 |  |  | 18d | 0d | Zhu YanQing | 8h |  |
| 79 | 1.2.6 | BC_1: Perform AFM of contact surfaces for Surface Roughness & Adhesion | 1d | 2019-12-03 | 2019-12-03 | 78 |  |  | 18d | 0d | Zhu YanQing | 8h |  |
| 80 | 1.2.7 | BC_1: Perform elementalanalysis to identify materials on contacting surfaces (MB/CB/RCH) | 1d | 2019-12-04 | 2019-12-04 | 79 |  |  | 18d |  | Zhu YanQing | 8h |  |
