# WS1021 Format Project

Schedule from MS Project, 2017-12-12 to 2019-11-22, costs in $, A marks actual dates.
Wispry inc

## Calendars

- Standard: Mon-Fri 08:00-12:00, 13:00-17:00; Sat-Sun off. Exceptions (off unless hours are given): 2018-04-22 08:00-12:00, 13:00-17:00.

## Resources

| Resource |
| --- |
| GlobalFoundries |
| Scott Witherspoon |
| Tan Luu |
| Amkor |
| ESMO |
| FEDEX |
| Wispry |
| Cascade |
| Unisem |
| Andy |
| Tung |
| David |
| Rameen |
| Marianne |
| David M. |
| Shipper |
| Tan |
| Pete |
| Pet |
| Jose |
| ESMO/Jazz |
| jos |
| jpse |
| volker |
| Anssi |
| Michael |
| Jose S |
| Niko |
| Jose O |
| Ilija |
| Yu |
| AAC |
| Jazz |
| Mark |
| Dana |
| J |
| Sangwoo |
| Sangwee |
| All |
| David Z |
| David Z. |
| Amko |
| Plastronics |
| Ironwood |
| Shawn |
| XFAB |
| eMemory |
| AAC Marketing |
| AAC/Wispry |

## Schedule

| ID | WBS | Task | Duration | Start | Finish | Predecessors | Complete | Remaining | Total slack | Free slack | Constraint | Resources | Work | Actual work | Cost | Actual cost |
| --- | --- | --- | --- | --- | --- | --- | --- | --- | --- | --- | --- | --- | --- | --- | --- | --- |
| 1 | 1 | **PR3 WS1021 Veriification Phase** | 253d? | 2017-12-12 A | 2018-11-28 |  | 49% | 129.46d? | 257d |  |  |  | 13784h | 6271.2h | 344,856.2 | 344,856.2 |
| 2 | 1.1 | **Toggle 8 Design Verification** | 17d | 2018-01-11 A | 2018-02-02 A |  | 100% |  |  |  |  |  | 216h | 216h |  |  |
| 3 | 1.1.1 | Toggle 8 Tape-in & CAD | 1d | 2018-01-11 A | 2018-01-11 A |  | 100% |  |  |  | start no earlier than 2018-01-11 | GlobalFoundries | 8h | 8h |  |  |
| 4 | 1.1.2 | Toggle 8 RTM | 2w | 2018-01-12 A | 2018-01-25 A | 3 | 100% |  |  |  |  | GlobalFoundries | 80h | 80h |  |  |
| 5 | 1.1.3 | Step Plan Approved Released | 6d | 2018-01-12 A | 2018-01-19 A | 3 | 100% |  |  |  |  | Wispry | 48h | 48h |  |  |
| 6 | 1.1.4 | Reticle Merged GDS Data | 5d | 2018-01-22 A | 2018-01-26 A | 5 | 100% |  |  |  |  | GlobalFoundries | 40h | 40h |  |  |
| 7 | 1.1.5 | Short Flow Masks | 1w | 2018-01-29 A | 2018-02-02 A | 6 | 100% |  |  |  |  | GlobalFoundries | 40h | 40h |  |  |
| 8 | 1.1.6 | Toggle 8 Lot Start | 1w | 2018-01-26 A | 2018-02-01 A | 4 | 100% |  |  |  |  |  |  |  |  |  |
| 9 | 1.2 | **Toggle 8 Fabrication (GlobalFoundries)** | 214d | 2018-02-05 A | 2018-11-28 |  | 59% | 88.52d | 146d |  |  |  | 5512h | 3232h | 344,856.2 | 344,856.2 |
| 10 | 1.2.1 | Short Flow Mechanicals (W=23) | 122d | 2018-02-05 A | 2018-07-23 A | 7 | 100% |  |  |  |  | GlobalFoundries | 976h | 976h | 14,925 | 14,925 |
| 11 | 1.2.2 | Prototype (RTAT) Lot | 16.4w | 2018-02-06 A | 2018-05-30 A | 8 | 100% |  |  |  | finish no earlier than 2018-05-30 | GlobalFoundries | 656h | 656h | 245,000 | 245,000 |
| 12 | 1.2.3 | Prototype Lot Shipment Snafu | 10d | 2018-05-31 A | 2018-06-13 A | 11 | 100% |  |  |  | start no earlier than 2018-05-30 | GlobalFoundries | 80h | 80h |  |  |
| 13 | 1.2.4 | NTAT1 FEOL (YGV10000YA) | 16w | 2018-03-19 A | 2018-07-05 A | 8 | 100% |  |  |  | start no earlier than 2018-03-19 | GlobalFoundries | 640h | 640h | 28,310.4 | 28,310.4 |
| 14 | 1.2.5 | NTAT1 HOLD CWI (YGV10000YA) | 40d | 2018-07-06 | 2018-08-30 | 13 |  |  | 93d | 9d |  | GlobalFoundries | 320h |  |  |  |
| 15 | 1.2.6 | NTAT1 BEOL (YGV10000YA) | 11w | 2018-09-13 | 2018-11-28 | 14, 63 |  |  | 84d | 0d |  | GlobalFoundries | 440h |  |  |  |
| 16 | 1.2.7 | NTAT2 FEOL(YGV14000YA) | 11w | 2018-04-23 A | 2018-07-06 A | 8 | 100% |  |  |  | start no earlier than 2018-04-23 | GlobalFoundries | 440h | 440h | 28,310.4 | 28,310.4 |
| 17 | 1.2.8 | NTAT2 HOLD CWI (YGV14000YA) | 40d | 2018-07-09 | 2018-08-31 | 16 |  |  | 92d | 8d |  | GlobalFoundries | 320h |  |  |  |
| 18 | 1.2.9 | NTAT2 BEOL (YGV17000YA) | 11w | 2018-09-13 | 2018-11-28 | 17, 63 |  |  | 84d | 0d |  | GlobalFoundries | 440h |  |  |  |
| 19 | 1.2.10 | NTAT3 FEOL (YGV17000YA) | 11w | 2018-04-22 A | 2018-07-05 A | 8 | 100% |  |  |  | start no earlier than 2018-04-22 | GlobalFoundries | 440h | 440h | 28,310.4 | 28,310.4 |
| 20 | 1.2.11 | NTAT3 HOLD CWI (YGV17000YA) | 40d | 2018-07-06 | 2018-08-30 | 19 |  |  | 93d | 9d |  | GlobalFoundries | 320h |  |  |  |
| 21 | 1.2.12 | NTAT3 BEOL (YGV17000YA) | 11w | 2018-09-13 | 2018-11-28 | 20, 63 |  |  | 84d | 0d |  | GlobalFoundries | 440h |  |  |  |
| 22 | 1.3 | **WS1021 WLCSP Set Up & Verification (Amkor)** | 188d | 2018-01-08 A | 2018-09-25 |  | 55% | 85.05d | 304d |  |  |  | 1176h | 644h |  |  |
| 23 | 1.3.1 | WLCSP Final POD | 1w | 2018-01-29 A | 2018-02-02 A | 5FS+1w | 100% |  |  |  |  | Rameen | 40h | 40h |  |  |
| 24 | 1.3.2 | Add WLCSP Level to 7HV PDK | 14d | 2018-01-08 A | 2018-01-25 A |  | 100% |  |  |  | start no earlier than 2018-01-08 | Scott Witherspoon | 112h | 112h |  |  |
| 25 | 1.3.3 | WLCSP Layout | 14d | 2018-01-26 A | 2018-02-14 A | 24 | 100% |  |  |  |  | Tan Luu | 112h | 112h |  |  |
| 26 | 1.3.4 | WLCSP Amkor Final CAD Design | 14d | 2018-02-15 A | 2018-03-06 A | 25 | 100% |  |  |  |  | Amkor | 112h | 112h |  |  |
| 27 | 1.3.5 | WLCSP Masks & Stencils | 7d | 2018-03-07 A | 2018-03-15 A | 26 | 100% |  |  |  |  | Amkor | 56h | 56h |  |  |
| 28 | 1.3.6 | WLCSP Set-up RTAT Wafer #14 (RDL&Bump) | 9d | 2018-07-03 A | 2018-07-13 A | 50 | 100% |  |  |  |  | Amkor | 72h | 72h |  |  |
| 29 | 1.3.7 | Decision to Release W#19 for WLCSP Full Flow | 1d | 2018-07-23 A | 2018-07-23 A | 56 | 100% |  |  |  |  | Wispry | 8h | 8h |  |  |
| 30 | 1.3.8 | RTAT Wafer #19 RDL & Bump | 19d | 2018-07-24 A | 2018-08-17 | 29 | 50% | 9.5d | 313d | 0d |  | Amkor | 152h | 76h |  |  |
| 31 | 1.3.9 | RTAT Wafer #19 DSP | 3w | 2018-08-20 | 2018-09-07 | 30 |  |  | 253d | 0d |  | Amkor | 120h |  |  |  |
| 32 | 1.3.10 | Ship Product and Design Variant Chips | 3d | 2018-09-10 | 2018-09-12 | 31 |  |  | 253d |  |  | Shipper | 24h |  |  |  |
| 33 | 1.3.11 | Ship Short Flow Wafers (10) | 3d | 2018-07-24 A | 2018-07-26 A | 10 | 100% |  |  |  |  | Amkor | 24h | 24h |  |  |
| 34 | 1.3.12 | WLCSP Bump process Characterization | 4w | 2018-07-27 A | 2018-08-23 | 33 | 20% | 3.2w | 304d | 0d |  | Amkor | 160h | 32h |  |  |
| 35 | 1.3.13 | WLCSP Assembly process characterization | 4w | 2018-08-24 | 2018-09-20 | 34 |  |  | 244d | 0d |  | Amkor | 160h |  |  |  |
| 36 | 1.3.14 | Receive Daisy Chain Parts | 3d | 2018-09-21 | 2018-09-25 | 35 |  |  | 244d |  |  | Wispry | 24h |  |  |  |

| ID | WBS | Task | Duration | Start | Finish | Predecessors | Complete | Remaining | Total slack | Free slack | Resources | Work | Actual work |
| --- | --- | --- | --- | --- | --- | --- | --- | --- | --- | --- | --- | --- | --- |
| 37 | 1.4 | **WS1021 WLCSP Set Up & Verification (Unisemr)** | 177d | 2018-02-15 A | 2018-10-18 |  | 26% | 130.37d | 231d |  |  | 832h | 219.2h |
| 38 | 1.4.1 | WLCSP Unisem Final CAD Design | 14d | 2018-02-15 A | 2018-03-06 A | 25 | 100% |  |  |  | Unisem | 112h | 112h |
| 39 | 1.4.2 | WLCSP Masks & Stencils | 7d | 2018-03-07 A | 2018-03-15 A | 38 | 100% |  |  |  | Unisem | 56h | 56h |
| 40 | 1.4.3 | Ship Short Flow Wafers (13) | 3d | 2018-07-24 A | 2018-07-26 A | 10 | 100% |  |  |  | Unisem | 24h | 24h |
| 41 | 1.4.4 | WLCSP Bump pipe cleaner wafer | 17d | 2018-07-27 A | 2018-08-20 | 40 | 20% | 13.6d | 231d | 0d | Unisem | 136h | 27.2h |
| 42 | 1.4.5 | WLCSP Ball Drop(200) Process Characterization | 4w | 2018-08-21 | 2018-09-17 | 41 |  |  | 171d | 0d | Unisem | 160h |  |
| 43 | 1.4.6 | Plated Bump (150) Process Characterization | 4w | 2018-08-21 | 2018-09-17 | 41 |  |  | 171d | 0d | Unisem | 160h |  |
| 44 | 1.4.7 | Assembly Process Characterization | 4w | 2018-09-18 | 2018-10-15 | 42, 43 |  |  | 171d | 0d | Unisem | 160h |  |
| 45 | 1.4.8 | Receive Daisy Chain Parts | 3d | 2018-10-16 | 2018-10-18 | 44 |  |  | 171d | 0d | Unisem | 24h |  |
| 46 | 1.5 | **WS1021 Wafer Level Verification (RTAT)** | 60d | 2018-06-14 A | 2018-09-05 |  | 54% | 27.78d | 263d |  |  | 864h | 464h |
| 47 | 1.5.1 | AFS Probe Verification WS1021 | 2w | 2018-06-14 A | 2018-06-27 A | 12, 65 | 100% |  |  |  | Andy | 80h | 80h |
| 48 | 1.5.2 | Wyko Verification WS1021 & Test Cells | 2w | 2018-06-14 A | 2018-06-27 A | 12 | 100% |  |  |  | Tung | 80h | 80h |
| 49 | 1.5.3 | E-Test Verification Test Cells | 2w | 2018-06-14 A | 2018-06-27 A | 12 | 100% |  |  |  | David M. | 80h | 80h |
| 50 | 1.5.4 | Ship (Set Up W#14 and Prime W#19) to Amkor | 3d | 2018-06-28 A | 2018-07-02 A | 49 | 100% |  |  |  | Marianne | 24h | 24h |
| 51 | 1.5.5 | Hold Wafer #24 for WLFO pending WLCSP verify | 10w | 2018-06-28 | 2018-09-05 | 49 |  |  | 212d | 0d | Rameen | 400h |  |
| 52 | 1.5.6 | AFS Probe Design Variant verification (W#16) | 1w | 2018-06-28 A | 2018-07-04 A | 49 | 100% |  |  |  | Andy | 40h | 40h |
| 53 | 1.5.7 | Dynamic verification WS1021 & variants (W#16) | 2w | 2018-07-05 A | 2018-07-18 A | 52 | 100% |  |  |  | David M. | 80h | 80h |
| 54 | 1.5.8 | Install Bump Probe Card on Cascade2 | 2d | 2018-07-05 A | 2018-07-06 A | 52 | 100% |  |  |  | Andy | 16h | 16h |
| 55 | 1.5.9 | Develop Step & Repeat scripts | 3d | 2018-07-09 A | 2018-07-11 A | 54 | 100% |  |  |  | Andy | 24h | 24h |
| 56 | 1.5.10 | AFS Probe Verification WLCSP Set Up (W#14) | 1w | 2018-07-16 A | 2018-07-20 A | 28, 55 | 100% |  |  |  | Andy | 40h | 40h |
| 57 | 1.6 | **Toggle 8.1 Mask Revision** | 65d | 2018-06-14 | 2018-09-12 |  |  |  | 160d |  |  | 720h |  |
| 58 | 1.6.1 | SPD Pad Correction | 2w | 2018-06-14 | 2018-06-27 | 12 |  |  | 308d |  | Tan | 80h |  |
| 59 | 1.6.2 | AE0103 Design Variant Short Correction | 6w | 2018-07-05 | 2018-08-15 | 52 |  |  | 273d |  | Tan | 240h |  |
| 60 | 1.6.3 | Vdd Idle Control | 6w | 2018-07-05 | 2018-08-15 | 52 |  |  | 84d | 0d | Pete | 240h |  |
| 61 | 1.6.4 | Mask Revision Tape-in | 2d | 2018-08-16 | 2018-08-17 | 60 |  |  | 84d | 0d | Pete | 16h |  |
| 62 | 1.6.5 | Product Engineering Reticle Work | 3w | 2018-08-20 | 2018-09-07 | 61 |  |  | 84d | 0d | GlobalFoundries | 120h |  |
| 63 | 1.6.6 | Toggle 8.1 RTM | 3d | 2018-09-10 | 2018-09-12 | 62 |  |  | 84d | 0d | GlobalFoundries | 24h |  |

| ID | WBS | Task | Duration | Start | Finish | Predecessors | Complete | Remaining | Total slack | Free slack | Constraint | Resources | Work | Actual work |
| --- | --- | --- | --- | --- | --- | --- | --- | --- | --- | --- | --- | --- | --- | --- |
| 64 | 1.7 | **WS1021 Lab Probe/Bench Test** | 230d? | 2017-12-12 A | 2018-10-26 |  | 19% | 185.66d? | 280d |  |  |  | 1312h | 256h |
| 65 | 1.7.1 | Pad Probe Card Fab | 1d | 2018-01-04 A | 2018-01-04 A |  | 100% |  |  |  | finish no earlier than 2018-01-04 | Jose | 8h | 8h |
| 66 | 1.7.2 | Bump Probe Card Fab | 1d | 2018-01-04 A | 2018-01-04 A |  | 100% |  |  |  | finish no earlier than 2018-01-04 | Jose | 8h | 8h |
| 67 | 1.7.3 | Probe DC Test Software | 3w | 2018-02-12 A | 2018-03-02 A |  | 100% |  |  |  | start no earlier than 2018-02-12 | Andy | 120h | 120h |
| 68 | 1.7.4 | Bench DC Screen Test Software | 3w | 2018-03-05 A | 2018-03-23 A | 67 | 100% |  |  |  |  | Andy | 120h | 120h |
| 69 | 1.7.5 | Bench RF Test Labview Software | 3w | 2018-08-21 | 2018-09-10 |  |  |  | 235d | 0d | start no earlier than 2018-08-21 | Andy | 120h |  |
| 70 | 1.7.6 | **WS1021 Socketed Screen Board** | 1d? | 2017-12-12 | 2017-12-12 |  |  |  | 510d |  |  |  |  |  |
| 71 | 1.7.6.1 | Socketed Screen Board Design | 1d? | 2017-12-12 | 2017-12-12 |  |  |  | 450d |  |  |  |  |  |
| 72 | 1.7.6.2 | Socketed Screen Board Fabrication | 1d? | 2017-12-12 | 2017-12-12 |  |  |  | 450d |  |  |  |  |  |
| 73 | 1.7.7 | **Soldered RF Evaluation Boards** | 57d | 2018-08-09 | 2018-10-26 |  |  |  | 281d |  |  |  | 656h |  |
| 74 | 1.7.7.1 | RF1 Component placement approval | 4d | 2018-08-09 | 2018-08-14 |  |  |  | 234d | 0d | start no earlier than 2018-08-09 | Jose S | 32h |  |
| 75 | 1.7.7.2 | RF1 Final Layout Approval | 3d | 2018-08-15 | 2018-08-17 | 74 |  |  | 234d | 0d |  | Jose S | 24h |  |
| 76 | 1.7.7.3 | RF1 FAB File Approval | 3d | 2018-08-20 | 2018-08-22 | 75 |  |  | 234d | 0d |  | Jose S | 24h |  |
| 77 | 1.7.7.4 | RF1 FAB Complete | 7d | 2018-08-23 | 2018-08-31 | 76 |  |  | 234d | 0d |  | Jose S | 56h |  |
| 78 | 1.7.7.5 | RF1 Soldered Board Assemble | 7d | 2018-09-03 | 2018-09-11 | 77 |  |  | 234d | 0d |  | Jose S | 56h |  |
| 79 | 1.7.7.6 | Ship Assemblies and Parts to AAC (SNG,China) | 3d | 2018-09-12 | 2018-09-14 | 78 |  |  | 251d |  |  | Michael | 24h |  |
| 80 | 1.7.7.7 | Temperature Characterizetion RF connectors | 2w | 2018-08-13 | 2018-08-24 |  |  |  | 221d | 0d | start no earlier than 2018-08-13 | volker | 80h |  |
| 81 | 1.7.7.8 | RF2 Board RF Design | 2w | 2018-08-27 | 2018-09-07 | 80 |  |  | 221d | 0d |  | Anssi | 80h |  |
| 82 | 1.7.7.9 | RF2 Component Placement | 1w | 2018-09-10 | 2018-09-14 | 81 |  |  | 221d | 0d |  | Jose S | 40h |  |
| 83 | 1.7.7.10 | RF2 Final Layout Approval | 2w | 2018-09-17 | 2018-09-28 | 82 |  |  | 221d | 0d |  | Jose S | 80h |  |
| 84 | 1.7.7.11 | RF2 FAB File Approval | 1w | 2018-10-01 | 2018-10-05 | 83 |  |  | 221d | 0d |  | Jose S | 40h |  |
| 85 | 1.7.7.12 | RF2 FAB | 2w | 2018-10-08 | 2018-10-19 | 84 |  |  | 221d | 0d |  | Jose S | 80h |  |
| 86 | 1.7.7.13 | RF2 Assembly | 1w | 2018-10-22 | 2018-10-26 | 85 |  |  | 221d |  |  | Jose S | 40h |  |
| 87 | 1.7.8 | **Socketed RF Evaluation Board** | 35d | 2018-07-16 | 2018-08-31 |  |  |  | 321d |  |  |  | 280h |  |
| 88 | 1.7.8.1 | Consulting Ironwood on custom elastomer socket | 7w | 2018-07-16 | 2018-08-31 |  |  |  | 261d |  | start no earlier than 2018-07-16 | Jose S | 280h |  |

| ID | WBS | Task | Type | Duration | Start | Finish | Predecessors | Complete | Remaining | Total slack | Free slack | Constraint | Resources | Work | Actual work |
| --- | --- | --- | --- | --- | --- | --- | --- | --- | --- | --- | --- | --- | --- | --- | --- |
| 89 | 1.8 | **WS1021 RTAT (Prototype) RF Characterization** |  | 20d | 2018-09-12 | 2018-10-09 |  |  |  | 294d |  |  |  | 320h |  |
| 90 | 1.8.1 | Small Signal Test |  | 1w | 2018-09-12 | 2018-09-18 | 69, 78 |  |  | 290d | 0d |  | Jose O | 80h |  |
| 91 | 1.8.2 | Large Signal |  | 1w | 2018-09-19 | 2018-09-25 | 90 |  |  | 234d | 0d |  | Niko; Jose O | 80h |  |
| 92 | 1.8.3 | Power Handling |  | 1w | 2018-09-26 | 2018-10-02 | 91 |  |  | 234d | 0d |  | Niko; Jose O | 80h |  |
| 93 | 1.8.4 | Switching Time |  | 1w | 2018-10-03 | 2018-10-09 | 92 |  |  | 234d |  |  | Niko; Jose O | 80h |  |
| 94 | 1.9 | **WS1021 TowerJazz ATE Probe Test** |  | 199d | 2017-12-12 A | 2018-09-13 |  | 85% | 29.9d | 312d |  |  |  | 1472h | 1240h |
| 95 | 1.9.1 | Probe Card Design Capture file |  | 9d | 2018-01-22 A | 2018-02-01 A | 5 | 100% |  |  |  |  |  |  |  |
| 96 | 1.9.2 | Membrane Core Design |  | 4w | 2018-02-02 A | 2018-03-01 A | 95 | 100% |  |  |  |  | Cascade | 160h | 160h |
| 97 | 1.9.3 | Membrane Core Fabrication |  | 4w | 2018-03-02 A | 2018-03-29 A | 98 | 100% |  |  |  |  | Cascade | 160h | 160h |
| 98 | 1.9.4 | Probe Card Design |  | 4w | 2018-02-02 A | 2018-03-01 A | 95 | 100% |  |  |  |  | Cascade | 160h | 160h |
| 99 | 1.9.5 | Probe Card Fabrication |  | 4w | 2018-03-02 A | 2018-03-29 A | 98 | 100% |  |  |  |  | Cascade | 160h | 160h |
| 100 | 1.9.6 | Shipping |  | 1w | 2018-03-30 | 2018-04-05 | 99, 97 |  |  | 368d |  |  | Shipper | 40h |  |
| 101 | 1.9.7 | Docking Hardware Fabrication |  | 5w | 2018-03-02 A | 2018-04-05 A | 96 | 100% |  |  |  |  | ESMO | 200h | 200h |
| 102 | 1.9.8 | Docking Kit Shipment |  | 1w | 2018-04-06 A | 2018-04-12 A | 101 | 100% |  |  |  |  | FEDEX | 40h | 40h |
| 103 | 1.9.9 | Docking Kit Installation |  | 1w | 2018-04-13 A | 2018-04-19 A | 102 | 100% |  |  |  |  | ESMO/Jazz | 40h | 40h |
| 104 | 1.9.10 | Membrane Probe Card Training |  | 2d | 2018-08-13 | 2018-08-14 |  |  |  | 312d | 0d | start no earlier than 2018-08-13 | Cascade | 16h |  |
| 105 | 1.9.11 | Membrane & Probe Card Installation |  | 2d | 2018-08-15 | 2018-08-16 | 104, 103 |  |  | 252d | 0d |  | Cascade | 16h |  |
| 106 | 1.9.12 | Debug & Verify Probe Solution |  | 4w | 2018-08-17 | 2018-09-13 | 105 |  |  | 252d |  |  | Wispry | 160h |  |
| 107 | 1.9.13 | LCR Meter Procurement |  | 4w | 2017-12-12 A | 2018-01-08 A |  | 100% |  |  |  |  | Wispry | 160h | 160h |
| 108 | 1.9.14 | SMU Procurement |  | 4w | 2017-12-12 A | 2018-01-08 A |  | 100% |  |  |  |  | Wispry | 160h | 160h |
| 109 | 1.10 | **WS1021 Amkor ATE Probe Test** |  | 85d | 2018-06-04 | 2018-09-28 |  |  |  | 301d |  |  |  | 1360h |  |
| 110 | 1.10.1 | Determine test platform at Amkor |  | 17w | 2018-06-04 | 2018-09-28 |  |  |  | 241d |  | start no earlier than 2018-06-04 | Ilija; Yu | 1360h |  |
| 111 | 2 | **Decision: WS1021.1 or WS1021.1-ESD** |  | 0d | 2018-08-27 | 2018-08-27 |  |  |  | 120d |  |  |  |  |  |
| 112 | 2.1 | ESD Solution Decision = NO | milestone | 0d | 2018-08-27 | 2018-08-27 |  |  |  | 209d | 68d | start no earlier than 2018-08-27 | AAC |  |  |
| 113 | 2.2 | ESD Solution Decision = YES | milestone | 0d | 2018-08-27 | 2018-08-27 |  |  |  | 116d | 10d | start no earlier than 2018-08-27 | AAC |  |  |

| ID | WBS | Task | Type | Duration | Start | Finish | Predecessors | Total slack | Free slack | Constraint | Resources | Work |
| --- | --- | --- | --- | --- | --- | --- | --- | --- | --- | --- | --- | --- |
| 114 | 3 | **WS1021 + WS5100 WLFO Demonstration** |  | 55d | 2018-09-05 | 2018-11-21 |  | 263d |  |  |  | 1360h |
| 115 | 3.1 | Decision: WLCSP RTAT W#19 was successful | milestone | 0d | 2018-09-05 | 2018-09-05 | 51 | 263d | 0d |  | Wispry |  |
| 116 | 3.2 | WLFO Build |  | 6w | 2018-09-06 | 2018-10-17 | 115 | 279d | 0d |  | Amkor | 240h |
| 117 | 3.3 | WLFO Bench Solder Down RF EvaluationBoard |  | 6w | 2018-09-06 | 2018-10-17 | 115 | 259d | 0d |  | Jose S | 240h |
| 118 | 3.4 | WLFO Bench Socketed Evaluation Board |  | 6w | 2018-09-06 | 2018-10-17 | 115 | 284d |  |  | Jose S | 240h |
| 119 | 3.5 | WS1021 + WS5100 WLFO Socket |  | 3w | 2018-09-06 | 2018-09-26 | 115 | 299d |  |  | Jose S; Rameen | 240h |
| 120 | 3.6 | WLFO RF Evaluation Board Assemblies |  | 1w | 2018-10-18 | 2018-10-24 | 117 | 259d | 0d |  | Jose S | 40h |
| 121 | 3.7 | **WS1021 + WS5100 RF Characterization** |  | 25d | 2018-10-18 | 2018-11-21 |  | 263d |  |  |  | 360h |
| 122 | 3.7.1 | Small Signal |  | 1w | 2018-10-25 | 2018-10-31 | 120 | 259d | 0d |  | Niko; Jose O | 80h |
| 123 | 3.7.2 | Large Signal |  | 1w | 2018-11-01 | 2018-11-07 | 122 | 259d | 0d |  | Niko; Jose O | 80h |
| 124 | 3.7.3 | Power |  | 1w | 2018-11-08 | 2018-11-14 | 123 | 259d | 0d |  | Niko; Jose O | 80h |
| 125 | 3.7.4 | Switching Time |  | 1w | 2018-11-15 | 2018-11-21 | 124 | 259d |  |  | Niko; Jose O | 80h |
| 126 | 3.7.5 | ESD |  | 1w | 2018-10-18 | 2018-10-24 | 116 | 279d | 0d |  | Jose S | 40h |
| 127 | 3.8 | Decision: WS1021 ESD Isolation by WS5100 | milestone | 0d | 2018-10-24 | 2018-10-24 | 126 | 283d |  |  | All |  |
| 128 | 4 | **WS5100 SP4T Switch Product** |  | 169d | 2018-07-31 | 2019-03-22 |  | 64d |  |  |  | 2432h |
| 129 | 4.1 | WS5100 MPW_005 RF & ESD Evalutation |  | 5w | 2018-07-31 | 2018-09-03 |  | 60d | 0d | start no earlier than 2018-07-31 | volker | 200h |
| 130 | 4.2 | WS5100 MPW_005 Evaluation Report |  | 4d | 2018-09-04 | 2018-09-07 | 129 | 60d | 0d |  | volker | 32h |
| 131 | 4.3 | **Decision: WS5100 Product for SP4T & WS1021.1-ESD** |  | 0d | 2018-09-07 | 2018-09-07 |  | 64d |  |  |  |  |
| 132 | 4.3.1 | WS5100 Product = YES | milestone | 0d | 2018-09-07 | 2018-09-07 | 130 | 64d | 0d |  | All |  |
| 133 | 4.3.2 | WS5100 Product = NO | milestone | 0d | 2018-09-07 | 2018-09-07 | 130 | 316d |  |  | All |  |
| 134 | 4.4 | **WS5100 Product Design and Fabrication** |  | 140d | 2018-09-10 | 2019-03-22 |  | 64d |  |  |  | 2200h |
| 135 | 4.4.1 | WS5100 Incremental Design Change |  | 4w | 2018-09-10 | 2018-10-05 | 132 | 60d | 0d |  | volker; David Z | 320h |
| 136 | 4.4.2 | WS5100 Product Tape-In |  | 1w | 2018-10-08 | 2018-10-12 | 135 | 60d | 0d |  | Pete | 40h |
| 137 | 4.4.3 | WS5100 Product Engineering |  | 2w | 2018-10-15 | 2018-10-26 | 136 | 60d | 0d |  | GlobalFoundries | 80h |
| 138 | 4.4.4 | WS5100 RTAT Prototype Lot |  | 30d | 2018-10-29 | 2018-12-07 | 137 | 60d | 0d |  | GlobalFoundries | 240h |
| 139 | 4.4.5 | WS5100 RTAT Wafer Level Verification |  | 1w | 2018-12-10 | 2018-12-14 | 138 | 60d | 0d |  | Andy | 40h |
| 140 | 4.4.6 | WS5100 RTAT Wafer Level ESD Verification |  | 1w | 2018-12-10 | 2018-12-14 | 138 | 242d |  |  | Mark | 40h |
| 141 | 4.4.7 | Decision to Release Qualification Lots | milestone | 0d | 2018-12-14 | 2018-12-14 | 139 | 64d | 0d |  | All |  |
| 142 | 4.4.8 | WS5100 NTAT1 Qualification Lot |  | 12w | 2018-12-17 | 2019-03-08 | 141 | 70d | 0d |  | GlobalFoundries | 480h |
| 143 | 4.4.9 | WS5100 NTAT2 Qualification Lot |  | 12w | 2018-12-24 | 2019-03-15 | 141FS+1w | 65d | 0d |  | GlobalFoundries | 480h |
| 144 | 4.4.10 | WS5100 NTAT3 Qualification Lot |  | 12w | 2018-12-31 | 2019-03-22 | 141FS+2w | 60d | 0d |  | GlobalFoundries | 480h |

| ID | WBS | Task | Duration | Start | Finish | Predecessors | Complete | Remaining | Total slack | Free slack | Constraint | Resources | Work | Actual work |
| --- | --- | --- | --- | --- | --- | --- | --- | --- | --- | --- | --- | --- | --- | --- |
| 145 | 5 | **PR4 Validation Phase** | 416d | 2018-01-24 A | 2019-08-27 |  | 4% | 398.52d | 64d |  |  |  | 21416h | 672h |
| 146 | 5.1 | **WS1021.1 Validation** | 335d | 2018-01-24 A | 2019-05-06 |  | 8% | 307.19d | 145d |  |  |  | 10752h | 672h |
| 147 | 5.1.1 | **WS1021.1 WLCSP BEOL Ops** | 30d | 2018-11-29 | 2019-01-09 | 112 |  |  | 145d |  |  |  | 552h |  |
| 148 | 5.1.1.1 | NTAT1 WLCSP | 2w | 2018-11-29 | 2018-12-12 | 27, 15 |  |  | 141d | 0d |  | Amkor | 80h |  |
| 149 | 5.1.1.2 | NTAT2 WLCSP | 2w | 2018-11-29 | 2018-12-12 | 27, 18 |  |  | 146d | 5d |  | Amkor | 80h |  |
| 150 | 5.1.1.3 | NTAT3 WLCSP | 2w | 2018-11-29 | 2018-12-12 | 27, 21 |  |  | 151d | 10d |  | Amkor | 80h |  |
| 151 | 5.1.1.4 | NTAT1 ATE Probe | 1w | 2018-12-13 | 2018-12-19 | 148 |  |  | 141d | 0d |  | Jazz | 40h |  |
| 152 | 5.1.1.5 | NTAT2 ATE Probe | 1w | 2018-12-20 | 2018-12-26 | 149, 151 |  |  | 141d | 0d |  | Jazz | 40h |  |
| 153 | 5.1.1.6 | NTAT2 ATE Probe | 1w | 2018-12-27 | 2019-01-02 | 150, 152 |  |  | 141d | 0d |  | Jazz | 40h |  |
| 154 | 5.1.1.7 | NTAT1 BSG,BSC,DICE,T&R | 1w | 2018-12-20 | 2018-12-26 | 151 |  |  | 234d |  |  | Amkor | 40h |  |
| 155 | 5.1.1.8 | NTAT2 BSG,BSC,DICE,T&R | 1w | 2018-12-27 | 2019-01-02 | 152 |  |  | 229d |  |  | Amkor | 40h |  |
| 156 | 5.1.1.9 | NTAT3 BSG,BSC,DICE,T&R | 1w | 2019-01-03 | 2019-01-09 | 153 |  |  | 224d |  |  | Amkor | 40h |  |
| 157 | 5.1.1.10 | NTAT1 Ship Finished Product to Wispry | 3d | 2018-12-20 | 2018-12-24 | 151 |  |  | 151d | 10d |  | Shipper | 24h |  |
| 158 | 5.1.1.11 | NTAT2 Ship Finished Product to Wispry | 3d | 2018-12-27 | 2018-12-31 | 152 |  |  | 146d | 5d |  | Shipper | 24h |  |
| 159 | 5.1.1.12 | NTAT3 Ship Finished Product to Wispry | 3d | 2019-01-03 | 2019-01-07 | 153 |  |  | 141d | 0d |  | Shipper | 24h |  |
| 160 | 5.1.2 | **WS1021.1 Reliability Hardware & Software** | 259d | 2018-01-24 A | 2019-01-18 |  | 19% | 209.44d | 221d |  |  |  | 3512h | 672h |
| 161 | 5.1.2.1 | Interposer Rel ATE Daughter Board Des & Fab | 8w | 2018-01-24 A | 2018-03-20 A |  | 100% |  |  |  | start no earlier than 2018-01-24 | Jose S | 320h | 320h |
| 162 | 5.1.2.2 | Interposer Panel Vendor Selection | 4d | 2018-01-31 A | 2018-02-05 A |  | 100% |  |  |  | finish no earlier than 2018-02-05 | Jose S | 32h | 32h |
| 163 | 5.1.2.3 | Interposer Panel Design | 2w | 2018-02-06 A | 2018-02-19 A | 162 | 100% |  |  |  |  | Jose S | 80h | 80h |
| 164 | 5.1.2.4 | Interposer Panel Fab | 6w | 2018-02-20 A | 2018-04-02 A | 163 | 100% |  |  |  |  | Jose S | 240h | 240h |
| 165 | 5.1.2.5 | Order Interposer FlatTop Socket (HTOL/HAST) | 8w | 2018-07-13 | 2018-09-06 |  |  |  | 272d | 36d | start no earlier than 2018-07-13 | Jose S | 320h |  |
| 166 | 5.1.2.6 | Order Reliability Sockets | 6w | 2018-08-17 | 2018-09-27 |  |  |  | 302d |  | start no earlier than 2018-08-17 | Jose S | 240h |  |
| 167 | 5.1.2.7 | MEMS Cycling/Hold Down Labview Program | 3w | 2018-09-11 | 2018-10-01 | 69 |  |  | 240d |  |  | Jose S | 120h |  |
| 168 | 5.1.2.8 | MEMS Cycling/HD Board Des & Fab | 7w | 2018-08-17 | 2018-10-04 |  |  |  | 232d | 0d | start no earlier than 2018-08-17 | Jose S | 280h |  |
| 169 | 5.1.2.9 | MEMS Cycling/HD FPGA Programming | 2w | 2018-09-28 | 2018-10-11 | 168FS-1w |  |  | 232d |  |  | Jose S | 80h |  |
| 170 | 5.1.2.10 | PreCon Trays Des & Fab | 6w | 2018-10-08 | 2018-11-16 |  |  |  | 206d |  | start no earlier than 2018-10-08 | Jose S | 240h |  |
| 171 | 5.1.2.11 | Identify & Buy HTOL Hardware | 8w | 2018-09-03 | 2018-10-26 |  |  |  | 221d | 0d | start no earlier than 2018-09-03 | Jose S | 320h |  |
| 172 | 5.1.2.12 | HTOL Board Assembly | 1w | 2018-10-29 | 2018-11-02 | 165, 171 |  |  | 216d |  |  | Jose S | 40h |  |
| 173 | 5.1.2.13 | HTOL Vectors Labview Programming | 2w | 2018-09-03 | 2018-09-14 |  |  |  | 271d | 0d | start no earlier than 2018-09-03 | Jose S | 80h |  |
| 174 | 5.1.2.14 | Identify & Buy HAST Hardware | 8w | 2018-09-17 | 2018-11-09 | 173 |  |  | 211d |  |  | Jose S | 320h |  |
| 175 | 5.1.2.15 | HAST Board Assembly | 1w | 2018-10-29 | 2018-11-02 | 165, 171 |  |  | 176d | 0d |  | Jose S | 40h |  |
| 176 | 5.1.2.16 | Identify & Buy ESD/LU Hardware | 8w | 2018-11-05 | 2018-12-28 | 175 |  |  | 176d |  |  | Jose S | 320h |  |
| 177 | 5.1.2.17 | ESD/LU Board Assembly | 1w | 2018-10-29 | 2018-11-02 | 165, 171 |  |  | 216d |  |  | Jose S | 40h |  |
| 178 | 5.1.2.18 | JEDEC BLR Hardware Des & Fab | 8w | 2018-11-12 | 2019-01-04 | 171FS+2w |  |  | 161d | 0d |  | Jose S | 320h |  |
| 179 | 5.1.2.19 | JEDEC BLR Assembly | 2w | 2019-01-07 | 2019-01-18 | 178 |  |  | 161d |  |  | Jose S | 80h |  |

| ID | WBS | Task | Duration | Start | Finish | Predecessors | Total slack | Free slack | Resources | Work |
| --- | --- | --- | --- | --- | --- | --- | --- | --- | --- | --- |
| 180 | 5.1.3 | **WS1021.1 Reliability Stress** | 136d | 2018-10-19 | 2019-04-26 |  | 151d |  | Mark | 5688h |
| 181 | 5.1.3.1 | Sample Screen R-2, 3, 4 | 1w | 2019-01-08 | 2019-01-14 | 157, 158, 159 | 141d | 0d |  |  |
| 182 | 5.1.3.2 | Sample Screen R-10 | 3d | 2019-01-15 | 2019-01-17 | 181 | 141d | 0d |  |  |
| 183 | 5.1.3.3 | Sample Screen (All) | 1w | 2019-01-18 | 2019-01-24 | 182 | 174d | 0d |  |  |
| 184 | 5.1.3.4 | **R-2 High Temp Storage Life (HTSL)** | 40d | 2019-01-15 | 2019-03-11 |  | 179d |  |  | 376h |
| 185 | 5.1.3.4.1 | HTSL | 6w | 2019-01-15 | 2019-02-25 | 181 | 175d | 0d | Jose S | 240h |
| 186 | 5.1.3.4.2 | Final ATE RP 1000h | 3d | 2019-02-26 | 2019-02-28 | 185 | 175d | 0d | Yu | 24h |
| 187 | 5.1.3.4.3 | FA & Disposition (As needed) | 7d | 2019-03-01 | 2019-03-11 | 186 | 175d | 34d | Ilija; Mark | 112h |
| 188 | 5.1.3.5 | **R-3 Low Temp Storage Life (LTSL)** | 40d | 2019-01-15 | 2019-03-11 |  | 179d |  |  | 376h |
| 189 | 5.1.3.5.1 | LTSL | 6w | 2019-01-15 | 2019-02-25 | 181 | 175d | 0d | Jose S | 240h |
| 190 | 5.1.3.5.2 | Final ATE RP 1000h | 3d | 2019-02-26 | 2019-02-28 | 189 | 175d | 0d | Yu | 24h |
| 191 | 5.1.3.5.3 | FA & Disposition (As needed) | 7d | 2019-03-01 | 2019-03-11 | 190 | 175d | 34d | Ilija; Mark | 112h |
| 192 | 5.1.3.6 | **R-4 High Temp Operating Life (HTOL)** | 43d | 2019-01-15 | 2019-03-14 |  | 182d |  |  | 400h |
| 193 | 5.1.3.6.1 | HTOL (500h) | 3w | 2019-01-15 | 2019-02-04 | 181 | 178d | 0d | Jose S | 120h |
| 194 | 5.1.3.6.2 | Intermediate ATE RP (500h) | 3d | 2019-02-05 | 2019-02-07 | 193 | 178d | 0d | Yu | 24h |
| 195 | 5.1.3.6.3 | HTOL (1000h) | 3w | 2019-02-08 | 2019-02-28 | 194 | 178d | 0d | Jose S | 120h |
| 196 | 5.1.3.6.4 | Final RP 1000h | 3d | 2019-03-01 | 2019-03-05 | 195 | 178d | 0d | Yu | 24h |
| 197 | 5.1.3.6.5 | FA & Disposition (As needed) | 7d | 2019-03-06 | 2019-03-14 | 196 | 178d |  | Ilija; Mark | 112h |
| 198 | 5.1.3.7 | **R-5 ESD Human Body Model (HBM ESD)** | 13d | 2019-01-25 | 2019-02-12 |  | 204d |  |  | 160h |
| 199 | 5.1.3.7.1 | HBM ESD | 1w | 2019-01-25 | 2019-01-31 | 183 | 200d | 0d | Jose S | 40h |
| 200 | 5.1.3.7.2 | Final ATE RP | 1d | 2019-02-01 | 2019-02-01 | 199 | 200d | 0d | Yu | 8h |
| 201 | 5.1.3.7.3 | FA & Disposition (As needed) | 7d | 2019-02-04 | 2019-02-12 | 200 | 200d |  | Ilija; Mark | 112h |
| 202 | 5.1.3.8 | **R-9 Latch Up (LU)** | 13d | 2019-01-25 | 2019-02-12 |  | 204d |  |  | 160h |
| 203 | 5.1.3.8.1 | Latch Up | 1w | 2019-01-25 | 2019-01-31 | 183 | 200d | 0d | Jose S | 40h |
| 204 | 5.1.3.8.2 | Final ATE RP | 1d | 2019-02-01 | 2019-02-01 | 203 | 200d | 0d | Yu | 8h |
| 205 | 5.1.3.8.3 | FA & Disposition (As needed) | 7d | 2019-02-04 | 2019-02-12 | 204 | 200d |  | Ilija; Mark | 112h |

| ID | WBS | Task | Duration | Start | Finish | Predecessors | Total slack | Free slack | Resources | Work |
| --- | --- | --- | --- | --- | --- | --- | --- | --- | --- | --- |
| 206 | 5.1.3.9 | **R-10 Preconditioning (PC)** | 25d | 2019-01-18 | 2019-02-21 |  | 145d |  |  | 312h |
| 207 | 5.1.3.9.1 | Pre-Bake | 1d | 2019-01-18 | 2019-01-18 | 182 | 141d | 0d | Jose S | 8h |
| 208 | 5.1.3.9.2 | MSL1 Soak | 1w | 2019-01-21 | 2019-01-25 | 207 | 141d | 0d | Jose S | 40h |
| 209 | 5.1.3.9.3 | 3X Reflow | 2d | 2019-01-28 | 2019-01-29 | 208 | 141d | 0d | Jose S | 16h |
| 210 | 5.1.3.9.4 | Final ATE RP | 3d | 2019-01-30 | 2019-02-01 | 209 | 141d | 0d | Yu | 24h |
| 211 | 5.1.3.9.5 | FA & Disposition (As Needed) | 14d | 2019-02-04 | 2019-02-21 | 210 | 193d |  | Ilija; Mark | 224h |
| 212 | 5.1.3.10 | **R-11 Highly Accelerated Stress Test (HAST)** | 23d | 2019-02-04 | 2019-03-06 |  | 182d |  |  | 296h |
| 213 | 5.1.3.10.1 | HAST (96h) | 4d | 2019-02-04 | 2019-02-07 | 210 | 178d | 0d | Jose S | 32h |
| 214 | 5.1.3.10.2 | HAST ATE RP (96h) | 1d | 2019-02-08 | 2019-02-08 | 213 | 178d | 0d | Yu | 8h |
| 215 | 5.1.3.10.3 | HAST (168h) | 3d | 2019-02-11 | 2019-02-13 | 214 | 178d | 0d | Jose S | 24h |
| 216 | 5.1.3.10.4 | HAST ATE RP (168) | 1d | 2019-02-14 | 2019-02-14 | 215 | 178d | 0d | Yu | 8h |
| 217 | 5.1.3.10.5 | FA & Dispostion (As Needed) | 14d | 2019-02-15 | 2019-03-06 | 216 | 178d | 37d | Ilija; Mark | 224h |
| 218 | 5.1.3.11 | **R-12 Temperature Cycling - Component Level (TC-CL)** | 60d | 2019-02-04 | 2019-04-26 |  | 145d |  |  | 592h |
| 219 | 5.1.3.11.1 | TC-CL (500 cycles) | 22d | 2019-02-04 | 2019-03-05 | 210 | 141d | 0d | Jose S | 176h |
| 220 | 5.1.3.11.2 | TC-CLATE RP (500 cycles) | 1d | 2019-03-06 | 2019-03-06 | 219 | 141d | 0d | Yu | 8h |
| 221 | 5.1.3.11.3 | TC-CL(1000 cycles) | 22d | 2019-03-07 | 2019-04-05 | 220 | 141d | 0d | Jose S | 176h |
| 222 | 5.1.3.11.4 | TC-CL ATE RP (Final - 1000 cycles) | 1d | 2019-04-08 | 2019-04-08 | 221 | 141d | 0d | Yu | 8h |
| 223 | 5.1.3.11.5 | FA & Disposition (As Needed) | 14d | 2019-04-09 | 2019-04-26 | 222 | 141d | 0d | Ilija; Mark | 224h |
| 224 | 5.1.3.12 | **R-12a Temperature Cycling - Board Level (TC-BL)** | 56d | 2018-10-19 | 2019-01-04 |  | 231d |  |  | 560h |
| 225 | 5.1.3.12.1 | TC-BL (1000 cycles or 30% fail in situ) | 42d | 2018-10-19 | 2018-12-17 | 45 | 171d | 0d | Rameen | 336h |
| 226 | 5.1.3.12.2 | FA & Disposition (As needed) | 14d | 2018-12-18 | 2019-01-04 | 225 | 171d |  | Rameen; Mark | 224h |
| 227 | 5.1.3.13 | **R-13 Switch Cycling (SCC)** | 17d | 2019-01-25 | 2019-02-18 |  | 195d |  |  | 248h |
| 228 | 5.1.3.13.1 | SCC | 2d | 2019-01-25 | 2019-01-28 | 183 | 191d | 0d | Andy | 16h |
| 229 | 5.1.3.13.2 | SCC Analysis | 1d | 2019-01-29 | 2019-01-29 | 228 | 196d | 0d | Dana | 8h |
| 230 | 5.1.3.13.3 | FA & Disposition (As Needed) | 14d | 2019-01-30 | 2019-02-18 | 229 | 196d |  | Dana; Mark | 224h |

| ID | WBS | Task | Duration | Start | Finish | Predecessors | Total slack | Free slack | Resources | Work |
| --- | --- | --- | --- | --- | --- | --- | --- | --- | --- | --- |
| 231 | 5.1.3.14 | **R-14 Hold Down (SHD)** | 20d | 2019-01-29 | 2019-02-25 |  | 195d |  |  | 272h |
| 232 | 5.1.3.14.1 | SHD | 1w | 2019-01-29 | 2019-02-04 | 228 | 191d | 0d | Andy | 40h |
| 233 | 5.1.3.14.2 | SHD Analysis | 1d | 2019-02-05 | 2019-02-05 | 232 | 191d | 0d | Dana | 8h |
| 234 | 5.1.3.14.3 | FA & Disposition (As Needed) | 14d | 2019-02-06 | 2019-02-25 | 233 | 191d |  | Dana; Mark | 224h |
| 235 | 5.1.3.15 | **R-15 Mechanical Shock - Component Level (MS-CL)** | 20d | 2019-01-25 | 2019-02-21 |  | 197d |  |  | 272h |
| 236 | 5.1.3.15.1 | MS-CL | 1w | 2019-01-25 | 2019-01-31 | 183 | 193d | 0d | Jose S | 40h |
| 237 | 5.1.3.15.2 | MS-CL ATE RP (Final) | 1d | 2019-02-01 | 2019-02-01 | 236 | 193d | 0d | Yu | 8h |
| 238 | 5.1.3.15.3 | FA & Disposition (As Needed) | 14d | 2019-02-04 | 2019-02-21 | 237 | 193d |  | Ilija; Mark | 224h |
| 239 | 5.1.3.16 | **R-16 Mechanical Shock - Board Level (MS-BL)** | 19d | 2018-10-19 | 2018-11-14 |  | 268d |  |  | 264h |
| 240 | 5.1.3.16.1 | MS-BL (200drops or 80% failure) | 1w | 2018-10-19 | 2018-10-25 | 45 | 208d | 0d | Rameen | 40h |
| 241 | 5.1.3.16.2 | FA & Disposition | 14d | 2018-10-26 | 2018-11-14 | 240 | 208d |  | Rameen; Mark | 224h |
| 242 | 5.1.3.17 | **R-17 Vibration - Component Level (VIB)** | 20d | 2019-01-25 | 2019-02-21 |  | 197d |  |  | 272h |
| 243 | 5.1.3.17.1 | VIB | 1w | 2019-01-25 | 2019-01-31 | 183 | 193d | 0d | Jose S | 40h |
| 244 | 5.1.3.17.2 | VIB ATE RP (Final) | 1d | 2019-02-01 | 2019-02-01 | 243 | 193d | 0d | Yu | 8h |
| 245 | 5.1.3.17.3 | FA & Disposition (As Needed) | 14d | 2019-02-04 | 2019-02-21 | 244 | 193d |  | Ilija; Mark | 224h |
| 246 | 5.1.3.18 | R-18 Physical Dimension (PD) | 1w | 2019-01-08 | 2019-01-14 | 159 | 221d |  | Amkor | 40h |
| 247 | 5.1.4 | **WS1021.1 RF Characterization** | 27d | 2019-01-25 | 2019-03-04 |  | 190d |  |  | 376h |
| 248 | 5.1.4.1 | Small Signal Test | 1w | 2019-01-25 | 2019-01-31 | 183 | 186d | 0d | Niko; Jose O | 80h |
| 249 | 5.1.4.2 | Large Signal | 1w | 2019-02-01 | 2019-02-07 | 248 | 186d | 0d | Niko; Jose O | 80h |
| 250 | 5.1.4.3 | Power Handling | 1w | 2019-02-08 | 2019-02-14 | 249 | 186d | 0d | Niko; Jose O | 80h |
| 251 | 5.1.4.4 | Switching Time | 1w | 2019-02-15 | 2019-02-21 | 250 | 186d | 0d | Niko; Jose O | 80h |
| 252 | 5.1.4.5 | RF Characterization Report | 1w | 2019-02-22 | 2019-02-28 | 251 | 186d | 0d | Anssi | 40h |
| 253 | 5.1.4.6 | Update Data Sheet | 2d | 2019-03-01 | 2019-03-04 | 252 | 186d |  | Anssi | 16h |
| 254 | 5.1.5 | **WS1021.1 Product & CMOS Characterization** | 72d | 2019-01-25 | 2019-05-06 |  | 145d |  |  | 624h |
| 255 | 5.1.5.1 | Product Characterization | 2w | 2019-01-25 | 2019-02-07 | 183 | 174d | 0d | Sangwoo | 80h |
| 256 | 5.1.5.2 | CMOS Characterization | 2w | 2019-02-08 | 2019-02-21 | 255 | 174d | 0d | Pete | 80h |
| 257 | 5.1.5.3 | Product Characterization Analysis & Disposition | 1w | 2019-02-08 | 2019-02-14 | 255 | 184d | 10d | Sangwee | 40h |
| 258 | 5.1.5.4 | CMOS Characterization & Disposition | 1w | 2019-02-22 | 2019-02-28 | 256 | 174d | 0d | Pete | 40h |
| 259 | 5.1.5.5 | FA & Disposition (As Needed) | 14d | 2019-03-01 | 2019-03-20 | 257, 258 | 174d |  | Ilija; Mark; Pete | 336h |
| 260 | 5.1.5.6 | Final Qualification & Characterization Report | 1w | 2019-04-29 | 2019-05-03 | 187, 191, 223, 217, 251, 257, 258 | 141d | 0d | Mark | 40h |
| 261 | 5.1.5.7 | PR4 Phase Review | 1d | 2019-05-06 | 2019-05-06 | 260 | 141d | 0d | Shawn | 8h |

| ID | WBS | Task | Duration | Start | Finish | Predecessors | Total slack | Free slack | Resources | Work |
| --- | --- | --- | --- | --- | --- | --- | --- | --- | --- | --- |
| 262 | 5.2 | **WS1021.1-ESD Validation** | 252d | 2018-09-10 | 2019-08-27 |  | 64d |  |  | 10664h |
| 263 | 5.2.1 | **WS1021.1-ESD WLFO BEOL Ops** | 38d | 2019-03-11 | 2019-05-01 |  | 64d |  |  | 672h |
| 264 | 5.2.1.1 | NTAT1 WLFO | 2w | 2019-03-11 | 2019-03-22 | 15, 142 | 70d | 0d | Amkor | 80h |
| 265 | 5.2.1.2 | NTAT2 WLFO | 2w | 2019-03-18 | 2019-03-29 | 18, 143 | 65d | 0d | Amkor | 80h |
| 266 | 5.2.1.3 | NTAT3 WLFO | 2w | 2019-03-25 | 2019-04-05 | 21, 144 | 60d | 0d | Amkor | 80h |
| 267 | 5.2.1.4 | NTAT1 WLFO ATE Probe | 2w | 2019-03-25 | 2019-04-05 | 264 | 70d | 0d | Amkor | 80h |
| 268 | 5.2.1.5 | NTAT2 WLFO ATE Probe | 2w | 2019-04-01 | 2019-04-12 | 265 | 65d | 0d | Amkor | 80h |
| 269 | 5.2.1.6 | NTAT2 WLFO ATE Probe | 2w | 2019-04-08 | 2019-04-19 | 266 | 60d | 0d | Amkor | 80h |
| 270 | 5.2.1.7 | NTAT1 DICE,T&R | 1w | 2019-04-08 | 2019-04-12 | 267 | 70d | 0d | Amkor | 40h |
| 271 | 5.2.1.8 | NTAT2 DICE,T&R | 1w | 2019-04-15 | 2019-04-19 | 268 | 65d | 0d | Amkor | 40h |
| 272 | 5.2.1.9 | NTAT3 DICE,T&R | 1w | 2019-04-22 | 2019-04-26 | 269 | 60d | 0d | Amkor | 40h |
| 273 | 5.2.1.10 | NTAT1 Ship Finished Product to Wispry | 3d | 2019-04-15 | 2019-04-17 | 270 | 70d | 10d | Shipper | 24h |
| 274 | 5.2.1.11 | NTAT2 Ship Finished Product to Wispry | 3d | 2019-04-22 | 2019-04-24 | 271 | 65d | 5d | Shipper | 24h |
| 275 | 5.2.1.12 | NTAT3 Ship Finished Product to Wispry | 3d | 2019-04-29 | 2019-05-01 | 272 | 60d | 0d | Shipper | 24h |
| 276 | 5.2.2 | **WS1021.1-ESD Reliability Hardware** | 150d | 2018-09-10 | 2019-04-05 |  | 110d |  |  | 3520h |
| 277 | 5.2.2.1 | Interposer Socket Reliability Evaluation Board (ATE) | 8w | 2018-09-10 | 2018-11-02 | 113, 132 | 106d | 0d | Jose S | 320h |
| 278 | 5.2.2.2 | Interposer Board/Carrier (ATE) | 8w | 2018-10-08 | 2018-11-30 | 277FS-4w | 110d | 0d | Jose S | 320h |
| 279 | 5.2.2.3 | Interposer Flat Top Socket (ATE) | 8w | 2018-11-05 | 2018-12-28 | 277 | 232d |  | Ironwood | 320h |
| 280 | 5.2.2.4 | WLFO Bench Socket Evaluation Board (Bench) | 8w | 2018-11-05 | 2018-12-28 | 278FS-4w | 110d | 0d | Jose S | 320h |
| 281 | 5.2.2.5 | WLFO Socket EVB (Bench) | 8w | 2018-12-31 | 2019-02-22 | 280 | 192d |  | Plastronics | 320h |
| 282 | 5.2.2.6 | WLFO RF Soldered Evaluation Board | 6w | 2018-12-03 | 2019-01-11 | 280FS-4w | 222d |  | Jose S | 240h |
| 283 | 5.2.2.7 | WLFO RF Socketed Evaluation Board | 8w | 2018-12-03 | 2019-01-25 | 280FS-4w | 106d | 0d | Jose S | 320h |
| 284 | 5.2.2.8 | WLFO RF Socket | 8w | 2019-01-22 | 2019-03-18 | 283FS-4d | 176d |  | Ironwood | 320h |
| 285 | 5.2.2.9 | WLFO Cycling and Hold Down Board | 10w | 2018-12-31 | 2019-03-08 | 283FS-4w | 106d | 0d | Jose S | 400h |
| 286 | 5.2.2.10 | WLFO BLR | 8w | 2019-02-11 | 2019-04-05 | 285FS-4w | 106d | 0d | Jose S; Rameen | 640h |

| ID | WBS | Task | Duration | Start | Finish | Predecessors | Total slack | Free slack | Resources | Work |
| --- | --- | --- | --- | --- | --- | --- | --- | --- | --- | --- |
| 287 | 5.2.3 | **WS1021.1-ESD Reliability Stress** | 97d | 2019-04-08 | 2019-08-20 |  | 69d |  | Mark | 5480h |
| 288 | 5.2.3.1 | Sample Screen R-2, 3, 4 | 1w | 2019-05-02 | 2019-05-08 | 273, 275, 274 | 60d | 0d | Yu | 40h |
| 289 | 5.2.3.2 | Sample Screen R-10 | 3d | 2019-05-09 | 2019-05-13 | 288 | 60d | 0d | Yu | 24h |
| 290 | 5.2.3.3 | Sample Screen (All) | 1w | 2019-05-14 | 2019-05-20 | 289 | 97d | 0d | Yu | 40h |
| 291 | 5.2.3.4 | **R-2 High Temp Storage Life (HTSL)** | 40d | 2019-05-09 | 2019-07-03 |  | 98d |  |  | 376h |
| 292 | 5.2.3.4.1 | HTSL | 6w | 2019-05-09 | 2019-06-19 | 288 | 94d | 0d | Jose S | 240h |
| 293 | 5.2.3.4.2 | Final ATE RP 1000h | 3d | 2019-06-20 | 2019-06-24 | 292 | 94d | 0d | Yu | 24h |
| 294 | 5.2.3.4.3 | FA & Disposition (As needed) | 7d | 2019-06-25 | 2019-07-03 | 293 | 94d | 34d | Ilija; Mark | 112h |
| 295 | 5.2.3.5 | **R-3 Low Temp Storage Life (LTSL)** | 40d | 2019-05-09 | 2019-07-03 |  | 103d |  |  | 376h |
| 296 | 5.2.3.5.1 | LTSL | 6w | 2019-05-09 | 2019-06-19 | 288 | 99d | 0d | Jose S | 240h |
| 297 | 5.2.3.5.2 | Final ATE RP 1000h | 3d | 2019-06-20 | 2019-06-24 | 296 | 99d | 0d | Yu | 24h |
| 298 | 5.2.3.5.3 | FA & Disposition (As needed) | 7d | 2019-06-25 | 2019-07-03 | 297 | 99d |  | Ilija; Mark | 112h |
| 299 | 5.2.3.6 | **R-4 High Temp Operating Life (HTOL)** | 43d | 2019-05-09 | 2019-07-08 |  | 95d |  |  | 400h |
| 300 | 5.2.3.6.1 | HTOL (500h) | 3w | 2019-05-09 | 2019-05-29 | 288 | 91d | 0d | Jose S | 120h |
| 301 | 5.2.3.6.2 | Intermediate ATE RP (500h) | 3d | 2019-05-30 | 2019-06-03 | 300 | 91d | 0d | Yu | 24h |
| 302 | 5.2.3.6.3 | HTOL (1000h) | 3w | 2019-06-04 | 2019-06-24 | 301 | 91d | 0d | Jose S | 120h |
| 303 | 5.2.3.6.4 | Final RP 1000h | 3d | 2019-06-25 | 2019-06-27 | 302 | 91d | 0d | Yu | 24h |
| 304 | 5.2.3.6.5 | FA & Disposition (As needed) | 7d | 2019-06-28 | 2019-07-08 | 303 | 91d | 31d | Ilija; Mark | 112h |
| 305 | 5.2.3.7 | **R-5 ESD Human Body Model (HBM ESD)** | 13d | 2019-05-21 | 2019-06-06 |  | 122d |  |  | 160h |
| 306 | 5.2.3.7.1 | HBM ESD | 1w | 2019-05-21 | 2019-05-27 | 290 | 118d | 0d | Jose S | 40h |
| 307 | 5.2.3.7.2 | Final ATE RP | 1d | 2019-05-28 | 2019-05-28 | 306 | 118d | 0d | Yu | 8h |
| 308 | 5.2.3.7.3 | FA & Disposition (As needed) | 7d | 2019-05-29 | 2019-06-06 | 307 | 118d |  | Ilija; Mark | 112h |
| 309 | 5.2.3.8 | **R-9 Latch Up (LU)** | 13d | 2019-05-21 | 2019-06-06 |  | 122d |  |  | 160h |
| 310 | 5.2.3.8.1 | Latch Up | 1w | 2019-05-21 | 2019-05-27 | 290 | 118d | 0d | Jose S | 40h |
| 311 | 5.2.3.8.2 | Final ATE RP | 1d | 2019-05-28 | 2019-05-28 | 310 | 118d | 0d | Yu | 8h |
| 312 | 5.2.3.8.3 | FA & Disposition (As needed) | 7d | 2019-05-29 | 2019-06-06 | 311 | 118d |  | Ilija; Mark | 112h |

| ID | WBS | Task | Duration | Start | Finish | Predecessors | Total slack | Free slack | Resources | Work |
| --- | --- | --- | --- | --- | --- | --- | --- | --- | --- | --- |
| 313 | 5.2.3.9 | **R-10 Preconditioning (PC)** | 25d | 2019-05-14 | 2019-06-17 |  | 64d |  |  | 312h |
| 314 | 5.2.3.9.1 | Pre-Bake | 1d | 2019-05-14 | 2019-05-14 | 289 | 60d | 0d | Jose S | 8h |
| 315 | 5.2.3.9.2 | MSL1 Soak | 1w | 2019-05-15 | 2019-05-21 | 314 | 60d | 0d | Jose S | 40h |
| 316 | 5.2.3.9.3 | 3X Reflow | 2d | 2019-05-22 | 2019-05-23 | 315 | 60d | 0d | Jose S | 16h |
| 317 | 5.2.3.9.4 | Final ATE RP | 3d | 2019-05-24 | 2019-05-28 | 316 | 60d | 0d | Yu | 24h |
| 318 | 5.2.3.9.5 | FA & Disposition (As Needed) | 14d | 2019-05-29 | 2019-06-17 | 317 | 111d |  | Ilija; Mark | 224h |
| 319 | 5.2.3.10 | **R-11 Highly Accelerated Stress Test (HAST)** | 23d | 2019-05-29 | 2019-06-28 |  | 101d |  |  | 296h |
| 320 | 5.2.3.10.1 | HAST (96h) | 4d | 2019-05-29 | 2019-06-03 | 317 | 97d | 0d | Jose S | 32h |
| 321 | 5.2.3.10.2 | HAST ATE RP (96h) | 1d | 2019-06-04 | 2019-06-04 | 320 | 97d | 0d | Yu | 8h |
| 322 | 5.2.3.10.3 | HAST (168h) | 3d | 2019-06-05 | 2019-06-07 | 321 | 97d | 0d | Jose S | 24h |
| 323 | 5.2.3.10.4 | HAST ATE RP (168) | 1d | 2019-06-10 | 2019-06-10 | 322 | 97d | 0d | Yu | 8h |
| 324 | 5.2.3.10.5 | FA & Dispostion (As Needed) | 14d | 2019-06-11 | 2019-06-28 | 323 | 97d | 37d | Ilija; Mark | 224h |
| 325 | 5.2.3.11 | **R-12 Temperature Cycling - Component Level (TC-CL)** | 60d | 2019-05-29 | 2019-08-20 |  | 64d |  |  | 592h |
| 326 | 5.2.3.11.1 | TC-CL (500 cycles) | 22d | 2019-05-29 | 2019-06-27 | 317 | 60d | 0d | Jose S | 176h |
| 327 | 5.2.3.11.2 | TC-CLATE RP (500 cycles) | 1d | 2019-06-28 | 2019-06-28 | 326 | 60d | 0d | Yu | 8h |
| 328 | 5.2.3.11.3 | TC-CL(1000 cycles) | 22d | 2019-07-01 | 2019-07-30 | 327 | 60d | 0d | Jose S | 176h |
| 329 | 5.2.3.11.4 | TC-CL ATE RP (Final - 1000 cycles) | 1d | 2019-07-31 | 2019-07-31 | 328 | 60d | 0d | Yu | 8h |
| 330 | 5.2.3.11.5 | FA & Disposition (As Needed) | 14d | 2019-08-01 | 2019-08-20 | 329 | 60d | 0d | Ilija; Mark | 224h |
| 331 | 5.2.3.12 | **R-12a Temperature Cycling - Board Level (TC-BL)** | 56d | 2019-04-08 | 2019-06-24 |  | 110d |  |  | 560h |
| 332 | 5.2.3.12.1 | TC-BL (1000 cycles or 30% fail in situ) | 42d | 2019-04-08 | 2019-06-04 | 286 | 106d | 0d | Rameen | 336h |
| 333 | 5.2.3.12.2 | FA & Disposition (As needed) | 14d | 2019-06-05 | 2019-06-24 | 332 | 106d |  | Rameen; Mark | 224h |
| 334 | 5.2.3.13 | **R-13 Switch Cycling (SCC)** | 17d | 2019-05-21 | 2019-06-12 |  | 113d |  |  | 248h |
| 335 | 5.2.3.13.1 | SCC | 2d | 2019-05-21 | 2019-05-22 | 290 | 109d | 0d | Andy | 16h |
| 336 | 5.2.3.13.2 | SCC Analysis | 1d | 2019-05-23 | 2019-05-23 | 335 | 114d | 0d | Dana | 8h |
| 337 | 5.2.3.13.3 | FA & Disposition (As Needed) | 14d | 2019-05-24 | 2019-06-12 | 336 | 114d |  | Dana; Mark | 224h |

| ID | WBS | Task | Type | Duration | Start | Finish | Predecessors | Total slack | Free slack | Resources | Work |
| --- | --- | --- | --- | --- | --- | --- | --- | --- | --- | --- | --- |
| 338 | 5.2.3.14 | **R-14 Hold Down (SHD)** |  | 20d | 2019-05-23 | 2019-06-19 |  | 113d |  |  | 272h |
| 339 | 5.2.3.14.1 | SHD |  | 1w | 2019-05-23 | 2019-05-29 | 335, 290 | 109d | 0d | Andy | 40h |
| 340 | 5.2.3.14.2 | SHD Analysis |  | 1d | 2019-05-30 | 2019-05-30 | 339 | 109d | 0d | Dana | 8h |
| 341 | 5.2.3.14.3 | FA & Disposition (As Needed) |  | 14d | 2019-05-31 | 2019-06-19 | 340 | 109d |  | Dana; Mark | 224h |
| 342 | 5.2.3.15 | **R-15 Mechanical Shock - Component Level (MS-CL)** |  | 20d | 2019-05-21 | 2019-06-17 |  | 115d |  |  | 272h |
| 343 | 5.2.3.15.1 | MS-CL |  | 1w | 2019-05-21 | 2019-05-27 | 290 | 111d | 0d | Jose S | 40h |
| 344 | 5.2.3.15.2 | MS-CL ATE RP (Final) |  | 1d | 2019-05-28 | 2019-05-28 | 343 | 111d | 0d | Yu | 8h |
| 345 | 5.2.3.15.3 | FA & Disposition (As Needed) |  | 14d | 2019-05-29 | 2019-06-17 | 344 | 111d |  | Ilija; Mark | 224h |
| 346 | 5.2.3.16 | **R-16 Mechanical Shock - Board Level (MS-BL)** |  | 19d | 2019-04-08 | 2019-05-02 |  | 147d |  |  | 264h |
| 347 | 5.2.3.16.1 | MS-BL (200drops or 80% failure) |  | 1w | 2019-04-08 | 2019-04-12 | 286 | 143d | 0d | Rameen | 40h |
| 348 | 5.2.3.16.2 | FA & Disposition |  | 14d | 2019-04-15 | 2019-05-02 | 347 | 143d |  | Rameen; Mark | 224h |
| 349 | 5.2.3.17 | **R-17 Vibration - Component Level (VIB)** |  | 20d | 2019-05-21 | 2019-06-17 |  | 115d |  |  | 272h |
| 350 | 5.2.3.17.1 | VIB |  | 1w | 2019-05-21 | 2019-05-27 | 290 | 111d | 0d | Jose S | 40h |
| 351 | 5.2.3.17.2 | VIB ATE RP (Final) |  | 1d | 2019-05-28 | 2019-05-28 | 350 | 111d | 0d | Yu | 8h |
| 352 | 5.2.3.17.3 | FA & Disposition (As Needed) |  | 14d | 2019-05-29 | 2019-06-17 | 351 | 111d |  | Ilija; Mark | 224h |
| 353 | 5.2.3.18 | R-18 Physical Dimension (PD) |  | 1w | 2019-05-02 | 2019-05-08 | 273, 274, 275 | 139d |  | Amkor | 40h |
| 354 | 5.2.4 | **WS1021.1-ESD RF Characterization** |  | 27d | 2019-05-02 | 2019-06-07 |  | 121d |  |  | 376h |
| 355 | 5.2.4.1 | Small Signal Test |  | 1w | 2019-05-02 | 2019-05-08 | 273, 274, 275 | 117d | 0d | Niko; Jose O | 80h |
| 356 | 5.2.4.2 | Large Signal |  | 1w | 2019-05-09 | 2019-05-15 | 355 | 117d | 0d | Niko; Jose O | 80h |
| 357 | 5.2.4.3 | Power Handling |  | 1w | 2019-05-16 | 2019-05-22 | 356 | 117d | 0d | Niko; Jose O | 80h |
| 358 | 5.2.4.4 | Switching Time |  | 1w | 2019-05-23 | 2019-05-29 | 357 | 117d | 0d | Niko; Jose O | 80h |
| 359 | 5.2.4.5 | RF Characterization Report |  | 1w | 2019-05-30 | 2019-06-05 | 358 | 117d | 0d | Anssi | 40h |
| 360 | 5.2.4.6 | Update Date Sheet |  | 2d | 2019-06-06 | 2019-06-07 | 359 | 117d |  | Anssi | 16h |
| 361 | 5.2.5 | **WS1021.1-ESD Product & CMOS Characterization** |  | 71d | 2019-05-21 | 2019-08-27 |  | 64d |  |  | 616h |
| 362 | 5.2.5.1 | Product Characterization |  | 2w | 2019-05-21 | 2019-06-03 | 290 | 97d | 0d | Sangwoo | 80h |
| 363 | 5.2.5.2 | CMOS Characterization |  | 2w | 2019-06-04 | 2019-06-17 | 362 | 97d | 0d | Pete | 80h |
| 364 | 5.2.5.3 | Product Characterization Analysis & Disposition |  | 1w | 2019-06-04 | 2019-06-10 | 362 | 116d |  | Sangwee | 40h |
| 365 | 5.2.5.4 | CMOS Characterization & Disposition |  | 1w | 2019-06-18 | 2019-06-24 | 363 | 106d |  | Pete | 40h |
| 366 | 5.2.5.5 | FA & Disposition (As Needed) |  | 14d | 2019-06-18 | 2019-07-05 | 362, 363 | 97d |  | Ilija; Mark; Pete | 336h |
| 367 | 5.2.5.6 | Final Qualification Report |  | 1w | 2019-08-21 | 2019-08-27 | 294, 292, 304, 324, 330 | 60d | 0d | Mark | 40h |
| 368 | 5.2.5.7 | PR4 Phase Review | milestone | 0d | 2019-08-27 | 2019-08-27 | 367 | 64d | 0d |  |  |

| ID | WBS | Task | Type | Duration | Start | Finish | Predecessors | Complete | Remaining | Total slack | Free slack | Constraint | Resources | Work | Actual work |
| --- | --- | --- | --- | --- | --- | --- | --- | --- | --- | --- | --- | --- | --- | --- | --- |
| 369 | 6 | **PR5 RTP Production Phase** |  | 447d | 2017-12-12 | 2019-08-27 |  |  |  | 64d |  |  |  |  |  |
| 370 | 6.1 | PR5 WS1021.1 Kick-Off | milestone | 0d | 2019-05-06 | 2019-05-06 | 261 |  |  | 145d |  |  |  |  |  |
| 371 | 6.2 | WS1021.1 Production (GF Limited) |  | 52w | 2017-12-12 | 2018-12-07 |  |  |  | 191d |  |  |  |  |  |
| 372 | 6.3 | PR5 WS1021.1-ESD | milestone | 0d | 2019-08-27 | 2019-08-27 | 368 |  |  | 64d |  |  |  |  |  |
| 373 | 6.4 | WS1021.1-ESD Production (GF Limited) |  | 52w | 2017-12-12 | 2018-12-07 |  |  |  | 191d |  |  |  |  |  |
| 375 | 7 | WiSpry Foundry Schedule |  | 529.9d? | 2018-02-06 A | 2019-11-22 |  | 13% | 470d? | 0d |  |  |  | 16232h | 338.18h |
| 377 | 8 | **XFAB RF SOI Gen2 MEMS Control Development** |  | 507d? | 2017-12-12 | 2019-11-20 |  |  |  | 3d |  |  |  | 3256h |  |
| 378 | 8.1 | HV FET Kick Off Meeting | milestone | 0d | 2018-08-01 | 2018-08-01 |  |  |  | 261d | 0d | start no earlier than 2018-08-01 | Wispry; XFAB |  |  |
| 379 | 8.2 | LV FET Control Feasibility Design |  | 83d | 2018-08-01 | 2018-11-23 | 378 |  |  | 261d |  |  | Pete | 664h |  |
| 380 | 8.3 | HV FET Feasibility Design |  | 83d | 2018-08-01 | 2018-11-23 | 378 |  |  | 261d |  |  | XFAB | 664h |  |
| 381 | 8.4 | OTP FeasibilityDesgin |  | 83d | 2018-08-01 | 2018-11-23 | 378 |  |  | 261d |  |  | XFAB; eMemory | 1328h |  |
| 382 | 8.5 | XR013 MPW Tape-In |  | 1d | 2018-11-26 | 2018-11-26 |  |  |  | 135d | 0d | start no earlier than 2018-11-26 | XFAB | 8h |  |
| 383 | 8.6 | XR013 MPW Product Engineering Work |  | 2w | 2018-11-27 | 2018-12-10 | 382 |  |  | 135d | 0d |  | XFAB | 80h |  |
| 384 | 8.7 | XR013 MPW Processing |  | 11w | 2018-12-11 | 2019-02-25 | 383 |  |  | 135d | 0d |  | XFAB | 440h |  |
| 385 | 8.8 | Die Level Verification LV FET Control |  | 8w | 2019-02-26 | 2019-04-22 | 384 |  |  | 150d | 0d |  |  |  |  |
| 386 | 8.9 | **Decision: HV FET Go/No Go** |  | 0d | 2017-12-12 | 2017-12-12 |  |  |  | 511d |  |  |  |  |  |
| 387 | 8.9.1 | 1) Terminate effort | milestone | 0d | 2017-12-12 | 2017-12-12 |  |  |  | 511d |  |  |  |  |  |
| 388 | 8.9.2 | 2) Continue to process & PDK release and L1 qualification | milestone | 0d | 2017-12-12 | 2017-12-12 |  |  |  | 511d |  |  |  |  |  |
| 389 | 8.10 | XR013 HV FET alpha PDK Release | milestone | 0d | 2019-11-20 | 2019-11-20 |  |  |  | 4d |  | start no earlier than 2019-11-20 |  |  |  |
| 390 | 8.11 | OTP Characterization and Qualification |  | 3mo | 2019-02-26 | 2019-05-20 | 384 |  |  | 135d | 0d |  |  |  |  |
| 391 | 8.12 | Decision: OTP Go/No Go | milestone | 0d | 2019-05-20 | 2019-05-20 | 390 |  |  | 135d |  |  |  |  |  |
| 392 | 8.13 | **Decision: LV FET Control Concepts** |  | 5d? | 2019-04-22 | 2019-04-29 | 385 |  |  | 149d |  |  |  | 72h |  |
| 393 | 8.13.1 | 1) Terminate Effort | milestone | 0d | 2019-04-22 | 2019-04-22 |  |  |  | 155d |  |  |  |  |  |
| 394 | 8.13.2 | 2) Continue development with 2nd MPW | milestone | 0d | 2019-04-22 | 2019-04-22 |  |  |  | 155d |  |  |  |  |  |
| 395 | 8.13.3 | 3) Continue to product level design | milestone | 0d | 2019-04-22 | 2019-04-22 |  |  |  | 155d |  |  |  |  |  |
| 400 | 8.13.4 | World Class Tuner (WCT) Project |  | 1d? | 2019-04-23 | 2019-04-23 |  |  |  | 154d |  |  |  |  |  |

Notes:
- 392: Decison Options: / 1) Terminate work / 2) Continue 2nd MPW iteration / 3) Continue to product

| ID | WBS | Task | Type | Duration | Start | Finish | Total slack | Resources | Work |
| --- | --- | --- | --- | --- | --- | --- | --- | --- | --- |
| 401 | 8.13.5 | **PR0 Project Kickoff** |  | 5d | 2019-04-22 | 2019-04-29 | 150d |  |  |
| 402 | 8.13.5.1 | Product Request Brief |  | 1w | 2019-04-23 | 2019-04-29 | 150d |  |  |
| 403 | 8.13.5.2 | Product Team Leads |  | 1d | 2019-04-23 | 2019-04-23 | 154d |  |  |
| 404 | 8.13.5.3 | PR0 Kick Off Meeting | milestone | 0d | 2019-04-22 | 2019-04-22 | 155d |  |  |
| 405 | 8.13.6 | **PR1 WCT Project Definition** |  | 1d? | 2019-04-23 | 2019-04-23 | 154d |  | 72h |
| 406 | 8.13.6.1 | PR1-1: Market Window Assessment |  | 1d? | 2019-04-23 | 2019-04-23 | 154d | AAC Marketing | 8h |
| 407 | 8.13.6.2 | PR1-2: MRD |  | 1d? | 2019-04-23 | 2019-04-23 | 154d | AAC Marketing | 8h |
| 408 | 8.13.6.3 | PR1-3: Preliminary Design Specifications |  | 1d? | 2019-04-23 | 2019-04-23 | 154d | AAC/Wispry | 8h |
| 409 | 8.13.6.4 | PR1-4: MRD Disconnects & Risks |  | 1d? | 2019-04-23 | 2019-04-23 | 154d | AAC/Wispry | 8h |
| 410 | 8.13.6.5 | PR1-5: Customer Specifications |  | 1d? | 2019-04-23 | 2019-04-23 | 154d | AAC/Wispry | 8h |
| 411 | 8.13.6.6 | PR1-6: Preliminary Data Sheet |  | 1d? | 2019-04-23 | 2019-04-23 | 154d | Wispry | 8h |
| 412 | 8.13.6.7 | PR1-7: Gantt Chart |  | 1d? | 2019-04-23 | 2019-04-23 | 154d | Shawn | 8h |
| 413 | 8.13.6.8 | PR1-8: Risk Assessment |  | 1d? | 2019-04-23 | 2019-04-23 | 154d | Shawn | 8h |
| 414 | 8.13.6.9 | PR1-9: Summary of Key Findings |  | 1d? | 2019-04-23 | 2019-04-23 | 154d | Shawn | 8h |
| 415 | 8.13.7 | PR2 WCT Design |  | 1d? | 2019-04-23 | 2019-04-23 | 154d |  |  |
| 416 | 8.13.8 | PR3 WCT Verification |  | 1d? | 2019-04-23 | 2019-04-23 | 154d |  |  |
| 417 | 8.13.9 | PR4 WCT Release to Production |  | 1d? | 2019-04-23 | 2019-04-23 | 154d |  |  |
| 418 | 8.13.10 | PR5 WCT EOL |  | 1d? | 2019-04-23 | 2019-04-23 | 154d |  |  |
